Schedule from MS Project, 2017-04-19 to 2019-06-20, costs in R$, A marks actual dates.

## Calendars

- Padrão: Mon-Fri 09:00-12:00, 13:00-18:00; Sat-Sun off.

## Resources

| Resource | Rate |
| --- | --- |
| Breno | 100 |
| Gabriel | 100 |
| Yuri | 100 |
| Matheus | 100 |
| Claudio | 100 |
| Adler | 300 |

## Schedule

| ID | WBS | Task | Duration | Start | Finish | Predecessors | Complete | Remaining | Actual start | Actual finish | Baseline start | Baseline finish | Baseline duration | Constraint | Resources | Work | Actual work | Cost | Baseline cost | Actual cost |
| --- | --- | --- | --- | --- | --- | --- | --- | --- | --- | --- | --- | --- | --- | --- | --- | --- | --- | --- | --- | --- |
| 1 | 1 | **Sistema Clinica Veterinária** | 44d? | 2019-04-22 09:00 | 2019-06-20 18:00 |  | 45% | 24.09d? | 2017-04-19 09:00 |  | 2019-04-22 09:00 | 2019-06-20 18:00 | 44d? |  |  | 558h | 200h | 48,200 | 27,900 | 15,400 |
| 2 | 1.1 | **Prospecção** | 3d | 2019-04-22 09:00 | 2019-04-24 18:00 |  | 100% |  | 2017-04-19 09:00 | 2019-04-25 17:12 | 2019-04-22 09:00 | 2019-04-24 18:00 | 3d |  |  | 28h | 28h | 3,000 | 2,000 | 3,000 |
| 3 | 1.1.1 | **PTEC** | 2d | 2019-04-22 09:00 | 2019-04-23 18:00 |  | 100% |  | 2017-04-19 09:00 | 2019-04-22 13:45 | 2019-04-22 09:00 | 2019-04-23 18:00 | 2d |  |  | 18h | 18h | 2,000 | 1,000 | 2,000 |
| 4 | 1.1.1.1 | Estudar Dominio de Aplicação | 0.05d | 2017-04-19 09:00 A | 2017-04-19 09:24 A |  | 100% |  |  |  | 2017-04-19 09:00 | 2017-04-19 09:24 | 0.05d |  | Breno [500%]; Claudio [500%]; Gabriel [500%]; Matheus [500%]; Yuri [500%] | 10h | 10h | 1,000 |  | 1,000 |
| 5 | 1.1.1.2 | Reunir-se com o fornecedor de requisitos | 0.03d | 2019-04-22 09:00 A | 2019-04-22 09:12 A | 4 | 100% |  |  |  | 2019-04-22 09:00 | 2019-04-22 09:12 | 0.03d |  | Breno; Claudio; Gabriel; Matheus; Yuri | 1h | 1h | 100 | 100 | 100 |
| 6 | 1.1.1.3 | Redigir PTEC | 0.16d | 2019-04-22 09:12 A | 2019-04-22 10:27 A | 5 | 100% |  |  |  | 2019-04-22 09:12 | 2019-04-22 10:27 | 0.16d |  | Matheus; Yuri; Claudio; Gabriel | 5h | 5h | 500 | 500 | 500 |
| 7 | 1.1.1.4 | Revisar proposta Tecnica | 0.12d | 2019-04-22 10:27 A | 2019-04-22 11:27 A | 6 | 100% |  |  |  | 2019-04-22 10:27 | 2019-04-22 11:27 | 0.12d |  | Breno | 1h | 1h | 100 | 100 | 100 |
| 8 | 1.1.1.5 | Aprovar PTEC | 0.06d | 2019-04-22 11:27 A | 2019-04-22 13:45 A | 7 | 100% |  |  |  | 2019-04-22 11:27 | 2019-04-22 13:45 | 0.06d |  | Adler [200%] | 1h | 1h | 300 | 300 | 300 |
| 9 | 1.1.2 | **Es. Prel. Tam.** | 0.86d | 2019-04-22 14:00 A | 2019-04-23 11:52 A |  | 100% |  |  |  | 2019-04-22 14:00 | 2019-04-23 11:52 | 0.86d |  |  | 5h | 5h | 500 | 500 | 500 |
| 10 | 1.1.2.1 | Estimar tamanho do projeto | 0.83d | 2019-04-22 14:00 A | 2019-04-23 10:40 A | 8 | 100% |  |  |  | 2019-04-22 14:00 | 2019-04-23 10:40 | 0.83d |  | Breno [60%] | 4h | 4h | 400 | 400 | 400 |
| 11 | 1.1.2.2 | Revisar estimativa de tamanho do projeto | 0.15d | 2019-04-23 10:40 A | 2019-04-23 11:52 A | 10 | 100% |  |  |  | 2019-04-23 10:40 | 2019-04-23 11:52 | 0.15d |  | Claudio [41.7%]; Gabriel [41.7%] | 1h | 1h | 100 | 100 | 100 |
| 12 | 1.1.3 | **Es. Cronograma Preliminar** | 2.54d | 2019-04-23 11:52 A | 2019-04-25 17:12 A |  | 100% |  |  |  | 2019-04-23 11:52 | 2019-04-25 17:12 | 2.54d |  |  | 5h | 5h | 500 | 500 | 500 |
| 13 | 1.1.3.1 | Elaborar Cronograma preliminar | 0.7d | 2019-04-23 11:52 A | 2019-04-25 16:00 A | 11 | 100% |  |  |  | 2019-04-23 11:52 | 2019-04-25 16:00 | 0.7d | finish no earlier than 2019-04-24 18:00 | Breno [71.4%] | 4h | 4h | 400 | 400 | 400 |
| 14 | 1.1.3.2 | Revisar Cronograma preliminar | 0.15d | 2019-04-25 16:00 A | 2019-04-25 17:12 A | 13 | 100% |  |  |  | 2019-04-25 16:00 | 2019-04-25 17:12 | 0.15d |  | Matheus [41.7%]; Yuri [41.7%] | 1h | 1h | 100 | 100 | 100 |
| 15 | 1.2 | **Análise** | 2.48d? | 2019-04-25 17:12 A | 2019-04-30 12:00 A |  | 100% |  |  |  | 2019-04-25 17:12 | 2019-04-30 12:00 | 2.48d? |  |  | 48h | 48h | 3,500 | 1,900 | 3,500 |
| 16 | 1.2.1 | **Documento de requisitos** | 1.45d? | 2019-04-25 17:12 A | 2019-04-29 11:47 A |  | 100% |  |  |  | 2019-04-25 17:12 | 2019-04-29 10:44 | 1.32d? |  |  | 40h | 40h | 2,700 | 1,200 | 2,700 |
| 17 | 1.2.1.1 | Reunir-se com o cliente | 0.72d | 2019-04-25 17:12 A | 2019-04-26 14:00 A | 14 | 100% |  |  |  | 2019-04-25 17:12 | 2019-04-26 09:48 | 0.3d |  | Breno [12.5%]; Claudio [12.5%]; Gabriel [12.5%]; Matheus [12.5%]; Yuri [12.5%] | 3h | 3h | 300 | 100 | 300 |
| 18 | 1.2.1.2 | Elaborar DRE | 0.56d | 2019-04-26 09:48 A | 2019-04-26 16:45 A | 17 | 100% |  |  |  | 2019-04-26 09:48 | 2019-04-26 11:33 | 0.22d |  | Claudio; Gabriel; Matheus; Yuri | 18h | 18h | 1,800 | 700 | 1,800 |
| 19 | 1.2.1.3 | Revisar DRE | 0.94d | 2019-04-26 11:33 A | 2019-04-29 11:47 A | 18 | 100% |  |  |  | 2019-04-26 11:33 | 2019-04-26 16:04 | 0.32d |  | Breno [39.7%] | 3h | 3h | 300 | 100 | 300 |
| 20 | 1.2.1.4 | Elaborar Plano de Projeto | 1d? | 2019-04-25 17:12 A | 2019-04-26 17:12 A | 19 | 100% |  |  |  | 2019-04-25 17:12 | 2019-04-26 17:12 | 1d? |  |  | 15h | 15h |  |  |  |
| 21 | 1.2.1.5 | Submeter DRE para aprovação do cliente | 0.46d | 2019-04-26 16:04 A | 2019-04-29 10:44 A | 20 | 100% |  |  |  | 2019-04-26 16:04 | 2019-04-29 10:44 | 0.46d |  | Adler [27.3%] | 1h | 1h | 300 | 300 | 300 |
| 22 | 1.2.2 | **Plano de Projeto** | 1.16d? | 2019-04-29 10:44 A | 2019-04-30 12:00 A |  | 100% |  |  |  | 2019-04-29 10:44 | 2019-04-30 12:00 | 1.16d? |  |  | 8h | 8h | 800 | 700 | 800 |
| 23 | 1.2.2.1 | Elaborar Plano de Projeto | 0.22d | 2019-04-29 10:44 A | 2019-04-29 13:29 A | 21 | 100% |  |  |  | 2019-04-29 10:44 | 2019-04-29 13:14 | 0.19d |  | Claudio; Gabriel; Matheus; Yuri | 7h | 7h | 700 | 600 | 700 |
| 24 | 1.2.2.2 | Revisar Plano de Projeto | 1d? | 2019-04-29 14:00 A | 2019-04-30 12:00 A | 23 | 100% |  |  |  | 2019-04-29 14:00 | 2019-04-30 12:00 | 1d? |  | Breno [12.5%] | 1h | 1h | 100 | 100 | 100 |

| ID | WBS | Task | Duration | Start | Finish | Predecessors | Complete | Remaining | Baseline start | Baseline finish | Baseline duration | Total slack | Resources | Work | Actual work | Cost | Baseline cost | Actual cost |
| --- | --- | --- | --- | --- | --- | --- | --- | --- | --- | --- | --- | --- | --- | --- | --- | --- | --- | --- |
| 25 | 1.3 | **Projeto** | 0.75d? | 2019-04-30 13:00 A | 2019-05-01 10:00 A |  | 100% |  | 2019-04-30 13:00 | 2019-05-01 12:00 | 1d? |  |  | 11h | 11h | 300 |  | 300 |
| 26 | 1.3.1 | Validar DRE | 0.12d? | 2019-04-30 13:00 A | 2019-04-30 14:00 A | 24 | 100% |  | 2019-04-30 13:00 | 2019-04-30 13:16 | 0.03d? |  | Adler | 1h | 1h | 300 |  | 300 |
| 27 | 1.3.2 | Corrigir DRE | 0.04d? | 2019-04-30 13:48 A | 2019-04-30 14:06 A |  | 100% |  | 2019-04-30 13:48 | 2019-04-30 14:06 | 0.04d? |  |  | 7h | 7h |  |  |  |
| 28 | 1.3.3 | Revisar Plano de Projeto | 0.75d? | 2019-04-30 13:00 A | 2019-05-01 10:00 A |  | 100% |  | 2019-04-30 13:00 | 2019-05-01 12:00 | 1d? |  |  | 3h | 3h |  |  |  |
| 29 | 1.4 | **Planejamento** | 2.92d? | 2019-05-02 09:00 A | 2019-05-06 17:23 A |  | 100% |  | 2019-05-02 09:00 | 2019-05-02 18:00 | 1d? |  |  | 29h | 29h |  |  |  |
| 30 | 1.4.1 | Elaborar Cronograma Definitivo | 0.94d? | 2019-05-02 09:00 A | 2019-05-02 17:30 A | 27 | 100% |  | 2019-05-02 09:00 | 2019-05-02 18:00 | 1d? |  |  | 15h | 15h |  |  |  |
| 31 | 1.4.2 | Elaborar Estimativa de Tamanho Definitiva | 0.92d? | 2019-05-02 09:00 A | 2019-05-02 17:23 A | 30 | 100% |  | 2019-05-02 09:00 | 2019-05-02 18:00 | 1d? |  |  | 12h | 12h |  |  |  |
| 32 | 1.4.3 | Revisar Cronograma | 1d? | 2019-05-02 17:23 A | 2019-05-03 17:23 A | 31 | 100% |  |  |  |  |  |  | 1h | 1h |  |  |  |
| 33 | 1.4.4 | Revisar Estimativa de Tamanho | 1d? | 2019-05-03 17:23 A | 2019-05-06 17:23 A | 32 | 100% |  |  |  |  |  |  | 1h | 1h |  |  |  |
| 34 | 1.5 | **Implementação** | 24.68d? | 2019-05-13 09:00 A | 2019-06-14 15:28 |  | 26% | 18.34d? | 2019-04-22 09:00 | 2019-06-07 09:49 | 34.1d? | 4.32d |  | 412h | 84h | 41,400 | 24,000 | 8,600 |
| 35 | 1.5.1 | **Release 00** | 1d | 2019-05-13 09:00 A | 2019-05-13 18:00 A |  | 100% |  | 2019-05-03 09:00 | 2019-05-03 18:00 | 1d |  |  | 1h | 1h | 300 | 300 | 300 |
| 36 | 1.5.1.1 | Entregar Documentação | 1d | 2019-05-13 09:00 A | 2019-05-13 18:00 A | 33 | 100% |  | 2019-05-03 09:00 | 2019-05-03 18:00 | 1d |  | Adler [12.5%] | 1h | 1h | 300 | 300 | 300 |
| 37 | 1.5.2 | **Release 01** | 5.31d? | 2019-05-14 08:00 A | 2019-05-21 11:30 A |  | 100% |  | 2019-05-06 08:00 | 2019-05-09 17:00 | 3.88d? |  |  | 83h | 83h | 8,300 | 6,200 | 8,300 |
| 38 | 1.5.2.1 | **Implementação** | 5.31d? | 2019-05-14 08:00 A | 2019-05-21 11:30 A |  | 100% |  | 2019-05-06 08:00 | 2019-05-09 17:00 | 3.88d? |  |  | 83h | 83h | 8,300 | 6,200 | 8,300 |
| 39 | 1.5.2.1.1 | **[RFC01] Manter Funcionários** | 3.12d? | 2019-05-14 08:00 A | 2019-05-17 10:00 A |  | 100% |  | 2019-05-06 08:00 | 2019-05-08 12:00 | 2.38d? |  |  | 48h | 48h | 4,800 | 3,800 | 4,800 |
| 40 | 1.5.2.1.1.1 | [RFS01] Cadastrar Funcionários | 1.38d? | 2019-05-14 08:00 A | 2019-05-15 10:00 A | 36 | 100% |  | 2019-05-06 08:00 | 2019-05-06 17:30 | 1.06d? |  | Breno; Matheus | 18h | 18h | 1,800 | 1,500 | 1,800 |
| 41 | 1.5.2.1.1.2 | [RFS02] Listar Funcionários | 0.88d | 2019-05-15 10:00 A | 2019-05-15 18:00 A | 40 | 100% |  | 2019-05-06 17:30 | 2019-05-07 14:00 | 0.69d |  | Breno; Matheus | 12h | 12h | 1,200 | 900 | 1,200 |
| 42 | 1.5.2.1.1.3 | [RFS03] Alterar Funcionário | 0.75d | 2019-05-16 08:00 A | 2019-05-16 15:00 A | 41 | 100% |  | 2019-05-07 14:00 | 2019-05-08 09:30 | 0.62d |  | Breno; Matheus | 10h | 10h | 1,000 | 900 | 1,000 |
| 43 | 1.5.2.1.1.4 | [RFS04] Remover Funcionário | 0.62d | 2019-05-16 15:00 A | 2019-05-17 10:00 A | 42 | 100% |  | 2019-05-08 09:30 | 2019-05-08 12:00 | 0.31d |  | Breno; Matheus | 8h | 8h | 800 | 500 | 800 |
| 44 | 1.5.2.1.2 | **[RFC02] Manter Clientes** | 2.19d | 2019-05-17 10:00 A | 2019-05-21 11:30 A |  | 100% |  | 2019-05-08 13:00 | 2019-05-09 17:00 | 1.5d |  |  | 35h | 35h | 3,500 | 2,400 | 3,500 |
| 45 | 1.5.2.1.2.1 | [RFS05] Cadastrar Clientes | 0.94d | 2019-05-17 10:00 A | 2019-05-20 09:30 A | 43 | 100% |  | 2019-05-08 13:00 | 2019-05-08 18:00 | 0.62d |  | Claudio; Yuri | 15h | 15h | 1,500 | 1,000 | 1,500 |
| 46 | 1.5.2.1.2.2 | [RFS06] Listar Clientes | 0.62d | 2019-05-20 09:30 A | 2019-05-20 15:30 A | 45 | 100% |  | 2019-05-09 09:00 | 2019-05-09 12:00 | 0.38d |  | Claudio; Yuri | 10h | 10h | 1,000 | 600 | 1,000 |
| 47 | 1.5.2.1.2.3 | [RFS07] Alterar Cliente | 0.44d | 2019-05-20 15:30 A | 2019-05-21 10:00 A | 46 | 100% |  | 2019-05-09 13:00 | 2019-05-09 16:00 | 0.38d |  | Claudio; Yuri | 7h | 7h | 700 | 600 | 700 |
| 48 | 1.5.2.1.2.4 | [RFS08] Remover Clientes | 0.19d | 2019-05-21 10:00 A | 2019-05-21 11:30 A | 47 | 100% |  | 2019-05-09 16:00 | 2019-05-09 17:00 | 0.12d |  | Claudio; Yuri | 3h | 3h | 300 | 200 | 300 |

| ID | WBS | Task | Duration | Start | Finish | Predecessors | Baseline start | Baseline finish | Baseline duration | Total slack | Free slack | Constraint | Resources | Work | Cost | Baseline cost |
| --- | --- | --- | --- | --- | --- | --- | --- | --- | --- | --- | --- | --- | --- | --- | --- | --- |
| 49 | 1.5.3 | **Release 02** | 5.62d | 2019-05-21 11:30 | 2019-05-28 17:30 |  | 2019-04-22 09:00 | 2019-05-22 16:30 | 22.81d | 1.25d |  |  |  | 88h | 8,800 | 5,500 |
| 50 | 1.5.3.1 | **Implementação** | 5.62d | 2019-05-21 11:30 | 2019-05-28 17:30 |  | 2019-04-22 09:00 | 2019-05-22 16:30 | 22.81d | 1.25d |  |  |  | 88h | 8,800 | 5,500 |
| 51 | 1.5.3.1.1 | **[RFC03] Manter Animal** | 3.19d | 2019-05-21 11:30 | 2019-05-24 14:00 |  | 2019-04-22 09:00 | 2019-05-13 16:00 | 15.75d | 1.38d |  |  |  | 51h | 5,100 | 3,000 |
| 52 | 1.5.3.1.1.1 | [RFS09] Cadastrar Animal | 1.19d | 2019-05-21 11:30 | 2019-05-22 14:00 | 48 | 2019-05-09 17:00 | 2019-05-10 15:00 | 0.75d | 1.38d | 0d |  | Claudio; Gabriel | 19h | 1,900 | 1,200 |
| 53 | 1.5.3.1.1.2 | [RFS10] Listar Animais | 1d | 2019-05-22 14:00 | 2019-05-23 14:00 | 52 | 2019-05-10 15:00 | 2019-05-13 09:30 | 0.44d | 1.38d | 0d |  | Claudio; Gabriel | 16h | 1,600 | 700 |
| 54 | 1.5.3.1.1.3 | [RFS11] Alterar Animal | 0.56d | 2019-05-23 14:00 | 2019-05-24 09:30 | 53 | 2019-05-13 09:30 | 2019-05-13 14:30 | 0.5d | 1.38d | 0d |  | Claudio; Gabriel | 9h | 900 | 800 |
| 55 | 1.5.3.1.1.4 | [RFS12] Remover Animal | 0.44d | 2019-05-24 09:30 | 2019-05-24 14:00 | 54 | 2019-05-13 14:30 | 2019-05-13 16:00 | 0.19d | 1.38d | 0d |  | Claudio; Gabriel | 7h | 700 | 300 |
| 56 | 1.5.3.1.2 | **[RFC04] Manter Salas** | 2.44d | 2019-05-24 14:00 | 2019-05-28 17:30 |  | 2019-05-21 09:00 | 2019-05-22 16:30 | 1.81d | 1.25d |  |  |  | 37h | 3,700 | 2,500 |
| 57 | 1.5.3.1.2.1 | [RFS13] Cadastrar Salas | 1.12d | 2019-05-24 14:00 | 2019-05-27 14:00 | 55 | 2019-05-21 09:00 | 2019-05-21 16:30 | 0.81d | 1.38d | 0d | start no earlier than 2019-05-21 09:00 | Breno; Yuri | 16h | 1,600 | 1,100 |
| 58 | 1.5.3.1.2.2 | [RFS14] Listar Salas | 0.81d | 2019-05-27 14:00 | 2019-05-28 10:30 | 57 | 2019-05-21 16:30 | 2019-05-22 10:30 | 0.5d | 1.38d | 0d | start no earlier than 2019-05-21 09:00 | Breno; Yuri | 11h | 1,100 | 600 |
| 59 | 1.5.3.1.2.3 | [RFS15] Alterar Salas | 0.56d | 2019-05-28 10:30 | 2019-05-28 16:00 | 58 | 2019-05-22 10:30 | 2019-05-22 15:30 | 0.5d | 1.25d | 0d |  | Breno; Yuri | 7h | 700 | 600 |
| 60 | 1.5.3.1.2.4 | [RFS16] Remover Salas | 0.19d | 2019-05-28 16:00 | 2019-05-28 17:30 | 59 | 2019-05-22 15:30 | 2019-05-22 16:30 | 0.12d | 1.25d | 0.06d | start no earlier than 2019-05-21 09:00 | Breno; Yuri | 3h | 300 | 200 |
| 61 | 1.5.4 | **Release 03** | 6.31d | 2019-05-29 09:00 | 2019-06-06 11:30 |  | 2019-05-29 09:00 | 2019-06-03 18:00 | 4d | 1.19d |  |  |  | 101h | 10,100 | 5,400 |
| 62 | 1.5.4.1 | **Implementação** | 6.31d | 2019-05-29 09:00 | 2019-06-06 11:30 |  | 2019-05-29 09:00 | 2019-06-03 18:00 | 4d | 1.19d |  |  |  | 101h | 10,100 | 5,400 |
| 63 | 1.5.4.1.1 | **[RFC05] Manter Medicamentos** | 2.62d | 2019-05-29 09:00 | 2019-05-31 15:00 |  | 2019-05-29 09:00 | 2019-05-31 10:00 | 2.12d | 1.19d |  |  |  | 42h | 4,200 | 2,400 |
| 64 | 1.5.4.1.1.1 | [RFS17] Cadastrar Medicamento | 1.12d | 2019-05-29 09:00 | 2019-05-30 10:00 | 60 | 2019-05-29 09:00 | 2019-05-29 15:00 | 0.62d | 1.19d | 0d | start no earlier than 2019-05-29 09:00 | Claudio; Gabriel | 18h | 1,800 | 1,000 |
| 65 | 1.5.4.1.1.2 | [RFS18] Listar Medicamentos | 0.69d | 2019-05-30 10:00 | 2019-05-30 16:30 | 64 | 2019-05-29 15:00 | 2019-05-29 18:00 | 0.38d | 1.19d | 0d |  | Claudio; Gabriel | 11h | 1,100 | 600 |
| 66 | 1.5.4.1.1.3 | [RFS19] Alterar Medicamento | 0.56d | 2019-05-30 16:30 | 2019-05-31 12:00 | 65 | 2019-05-30 15:00 | 2019-05-30 18:00 | 0.38d | 1.19d | 0d | finish no earlier than 2019-05-30 18:00 | Claudio; Gabriel | 9h | 900 | 600 |
| 67 | 1.5.4.1.1.4 | [RFS20] Remover Medicamento | 0.25d | 2019-05-31 13:00 | 2019-05-31 15:00 | 66 | 2019-05-31 09:00 | 2019-05-31 10:00 | 0.12d | 1.19d | 0d |  | Claudio; Gabriel | 4h | 400 | 200 |
| 68 | 1.5.4.1.2 | **[RFC06] Manter Estoque** | 3.69d | 2019-05-31 15:00 | 2019-06-06 11:30 |  | 2019-05-31 10:00 | 2019-06-03 18:00 | 1.88d | 1.19d |  |  |  | 59h | 5,900 | 3,000 |
| 69 | 1.5.4.1.2.1 | [RFS21] Incluir Medicamento em Estoque | 1.56d | 2019-05-31 15:00 | 2019-06-04 10:30 | 67 | 2019-05-31 10:00 | 2019-05-31 17:00 | 0.75d | 1.19d | 0d |  | Gabriel; Yuri | 25h | 2,500 | 1,200 |
| 70 | 1.5.4.1.2.2 | [RFS22] Listar Estoque | 1d | 2019-06-04 10:30 | 2019-06-05 10:30 | 69 | 2019-05-31 17:00 | 2019-06-03 14:00 | 0.62d | 1.19d | 0d |  | Gabriel; Yuri | 16h | 1,600 | 1,000 |
| 71 | 1.5.4.1.2.3 | [RFS23] Vender Medicamento | 1.12d | 2019-06-05 10:30 | 2019-06-06 11:30 | 70 | 2019-06-03 14:00 | 2019-06-03 18:00 | 0.5d | 1.19d | 0d |  | Gabriel; Yuri | 18h | 1,800 | 800 |
| 72 | 1.5.5 | **Release 04** | 6.37d? | 2019-06-06 11:30 | 2019-06-14 15:28 |  | 2019-06-04 08:00 | 2019-06-07 09:49 | 3.1d? | 1.19d |  |  |  | 139h | 13,900 | 6,600 |
| 73 | 1.5.5.1 | **Implementação** | 6.37d? | 2019-06-06 11:30 | 2019-06-14 15:28 |  | 2019-06-04 08:00 | 2019-06-07 09:49 | 3.1d? | 1.19d |  |  |  | 139h | 13,900 | 6,600 |
| 74 | 1.5.5.1.1 | **[RFC07] Manter Consultas** | 4.62d? | 2019-06-06 11:30 | 2019-06-12 17:28 |  | 2019-06-04 08:00 | 2019-06-05 15:49 | 1.73d? | 1.19d |  |  |  | 111h | 11,100 | 4,400 |
| 75 | 1.5.5.1.1.1 | [RFS24] Marcar Consulta | 2.31d | 2019-06-06 11:30 | 2019-06-10 11:57 | 71 | 2019-06-04 08:00 | 2019-06-04 15:29 | 0.81d | 1.19d | 0d |  | Breno; Matheus; Gabriel | 45h | 4,500 | 1,500 |
| 76 | 1.5.5.1.1.2 | [RFS25] Listar Consultas | 1.48d | 2019-06-10 11:57 | 2019-06-11 16:48 | 75 | 2019-06-04 15:29 | 2019-06-05 09:29 | 0.44d | 1.19d | 0d |  | Breno; Gabriel; Matheus | 25h | 2,500 | 900 |
| 77 | 1.5.5.1.1.3 | [RFS26] Visualizar Consulta | 0.75d? | 2019-06-11 16:48 | 2019-06-12 13:48 | 76 | 2019-06-05 09:29 | 2019-06-05 11:49 | 0.29d? | 6.4d |  |  | Breno; Gabriel; Matheus | 15h | 1,500 | 700 |
| 78 | 1.5.5.1.1.4 | [RFS27] Alterar Consulta | 0.88d | 2019-06-11 16:48 | 2019-06-12 14:48 | 76 | 2019-06-05 09:29 | 2019-06-05 14:09 | 0.35d | 1.19d | 0d |  | Breno; Gabriel; Matheus | 18h | 1,800 | 800 |
| 79 | 1.5.5.1.1.5 | [RFS28] Cancelar Consulta | 0.33d | 2019-06-12 14:48 | 2019-06-12 17:28 | 78 | 2019-06-05 14:09 | 2019-06-05 15:49 | 0.21d | 1.32d | 0d |  | Breno; Gabriel; Matheus | 8h | 800 | 500 |

| ID | WBS | Task | Duration | Start | Finish | Predecessors | Baseline start | Baseline finish | Baseline duration | Total slack | Free slack | Resources | Work | Cost | Baseline cost |
| --- | --- | --- | --- | --- | --- | --- | --- | --- | --- | --- | --- | --- | --- | --- | --- |
| 80 | 1.5.5.1.2 | **[RFC08] Manter Login** | 1.75d? | 2019-06-12 17:28 | 2019-06-14 15:28 |  | 2019-06-05 15:49 | 2019-06-07 09:49 | 1.38d? | 1.32d |  |  | 28h | 2,800 | 2,200 |
| 81 | 1.5.5.1.2.1 | [RFS29] Realizar Login | 1.12d? | 2019-06-12 17:28 | 2019-06-14 09:28 | 79 | 2019-06-05 15:49 | 2019-06-06 14:49 | 0.88d? | 1.32d | 0d | Claudio; Yuri | 18h | 1,800 | 1,400 |
| 82 | 1.5.5.1.2.2 | [RFS30] Recuperar Login | 0.62d? | 2019-06-14 09:28 | 2019-06-14 15:28 | 81 | 2019-06-06 14:49 | 2019-06-07 09:49 | 0.5d? | 1.32d | 0d | Claudio; Yuri | 10h | 1,000 | 800 |
| 83 | 1.6 | **Fechamento** | 3d? | 2019-06-14 15:28 | 2019-06-19 15:28 |  |  |  |  | 1.32d |  |  | 30h |  |  |
| 84 | 1.6.1 | Iniciar Finzalização do projeto | 1d? | 2019-06-14 15:28 | 2019-06-17 15:28 | 82 |  |  |  | 1.32d | 0d |  | 10h |  |  |
| 85 | 1.6.2 | Avaliar resultado final | 1d? | 2019-06-17 15:28 | 2019-06-18 15:28 | 84 |  |  |  | 1.32d | 0d |  | 15h |  |  |
| 86 | 1.6.3 | Apresentar resultado final | 1d | 2019-06-18 15:28 | 2019-06-19 15:28 | 85 |  |  |  | 1.32d |  |  | 5h |  |  |
